# pikcv

Schedule from MS Project, 2007-11-15 to 2008-01-23, A marks actual dates.

## Calendars

- Caretta: Mon-Fri 08:00-12:00, 13:00-17:00; Sat 08:00-12:00; Sun off.

## Resources

| Resource |
| --- |
| YU 1 |
| YU 2 |
| Burak Uçakan |
| Oray Kan |

## Schedule

| ID | WBS | Task | Duration | Start | Finish | Predecessors | Complete | Remaining | Total slack | Free slack | Resources | Work | Actual work |
| --- | --- | --- | --- | --- | --- | --- | --- | --- | --- | --- | --- | --- | --- |
| 1 | 1 | **PIK** | 54.75d | 2007-11-15 09:00 A | 2008-01-23 16:00 |  | 36% | 35.14d | 0d |  |  | 702h | 240h |
| 2 | 1.1 | Veritabanı tasarımı | 5d | 2007-11-15 09:00 A | 2007-11-21 14:00 A |  | 100% |  |  |  | Burak Uçakan | 40h | 40h |
| 3 | 1.2 | **PIKCV site** | 29.75d | 2007-11-21 14:00 A | 2007-12-28 16:00 | 2 | 55% | 13.39d | 20d |  |  | 363.6h | 200h |
| 4 | 1.2.1 | Anasayfa | 1d | 2007-11-21 14:00 | 2007-11-22 14:00 |  |  |  | 45.25d | 0d | Burak Uçakan | 8h |  |
| 5 | 1.2.2 | Statik sayfalar | 1d | 2007-11-22 14:00 | 2007-11-23 14:00 | 4 |  |  | 45.25d | 0d | Burak Uçakan | 8h |  |
| 6 | 1.2.3 | **İş arayan** | 27.75d | 2007-11-23 14:00 A | 2007-12-28 16:00 | 5 | 90% | 2.75d | 20d |  |  | 222h | 200h |
| 7 | 1.2.3.1 | Anasayfa | 2d | 2007-11-23 14:00 A | 2007-11-27 09:00 A |  | 100% |  |  |  | Burak Uçakan | 16h | 16h |
| 8 | 1.2.3.2 | Üye girişi | 0.5d | 2007-11-27 09:00 A | 2007-11-27 14:00 A | 7 | 100% |  |  |  | Burak Uçakan | 4h | 4h |
| 9 | 1.2.3.3 | **Yeni üyelik** | 10.5d | 2007-11-27 14:00 A | 2007-12-11 09:00 | 8 | 81% | 2d | 34.25d |  |  | 84h | 68h |
| 10 | 1.2.3.3.1 | Kişisel bilgi girişi | 0.5d | 2007-11-27 14:00 A | 2007-11-28 09:00 A |  | 100% |  |  |  | Burak Uçakan | 4h | 4h |
| 11 | 1.2.3.3.2 | CV girişi | 5d | 2007-11-28 09:00 A | 2007-12-04 14:00 A | 10 | 100% |  |  |  | Burak Uçakan | 40h | 40h |
| 12 | 1.2.3.3.3 | Test atama | 5d | 2007-12-04 14:00 A | 2007-12-11 09:00 | 11 | 60% | 2d | 34.25d | 0d | Burak Uçakan | 40h | 24h |
| 13 | 1.2.3.4 | Kişisel anasayfa | 2d | 2007-12-11 09:00 A | 2007-12-13 09:00 | 12 | 75% | 0.5d | 32.75d |  | Burak Uçakan | 16h | 12h |
| 14 | 1.2.3.5 | Kişisel Bilgiler | 3d | 2007-12-13 09:00 A | 2007-12-17 14:00 A | 13 | 100% |  |  |  | Burak Uçakan | 24h | 24h |
| 15 | 1.2.3.6 | Başvurularım | 2d | 2007-12-17 14:00 A | 2007-12-19 14:00 A | 14 | 100% |  |  |  | Burak Uçakan | 16h | 16h |
| 16 | 1.2.3.7 | Mesajlaşma | 2d | 2007-12-19 14:00 A | 2007-12-21 14:00 A | 15 | 100% |  |  |  | Burak Uçakan | 16h | 16h |
| 17 | 1.2.3.8 | **İlanlar** | 4.5d | 2007-12-21 14:00 A | 2007-12-27 14:00 |  | 94% | 0.25d | 21.25d |  |  | 36h | 34h |
| 18 | 1.2.3.8.1 | İlan Arama | 3d | 2007-12-21 14:00 A | 2007-12-26 09:00 A | 16 | 100% |  |  |  | Burak Uçakan | 24h | 24h |
| 19 | 1.2.3.8.2 | İlan listesi | 1d | 2007-12-26 09:00 A | 2007-12-27 09:00 | 18 | 75% | 0.25d | 21.75d |  | Burak Uçakan | 8h | 6h |
| 20 | 1.2.3.8.3 | Başvuru | 0.5d | 2007-12-27 09:00 A | 2007-12-27 14:00 A | 19 | 100% |  |  |  | Burak Uçakan | 4h | 4h |
| 21 | 1.2.3.9 | Ambargolu Firmalar | 0.5d | 2007-12-27 14:00 A | 2007-12-28 09:00 A | 20 | 100% |  |  |  | Burak Uçakan | 4h | 4h |
| 22 | 1.2.3.10 | Notifikasyonlar | 0.75d | 2007-12-28 09:00 A | 2007-12-28 16:00 A | 21 | 100% |  |  |  | Burak Uçakan | 6h | 6h |
| 23 | 1.2.4 | **İşveren** | 15.2d | 2007-12-04 14:00 | 2007-12-24 10:36 |  |  |  | 4.55d |  |  | 125.6h |  |
| 24 | 1.2.4.1 | Anasayfa | 3d | 2007-12-04 14:00 | 2007-12-07 14:00 | 11 |  |  | 4.55d | 0d | Oray Kan | 24h |  |
| 25 | 1.2.4.2 | Yeni üyelik | 0.5d | 2007-12-07 14:00 | 2007-12-08 09:00 | 24 |  |  | 4.55d | 0d | Oray Kan | 4h |  |
| 26 | 1.2.4.3 | Firma anasayfası | 2d | 2007-12-08 09:00 | 2007-12-11 14:00 | 25 |  |  | 4.55d | 0d | Oray Kan | 16h |  |

| ID | WBS | Task | Type | Duration | Start | Finish | Predecessors | Total slack | Free slack | Constraint | Resources | Work |
| --- | --- | --- | --- | --- | --- | --- | --- | --- | --- | --- | --- | --- |
| 27 | 1.2.4.4 | **Eleman Arama** |  | 3d | 2007-12-11 14:00 | 2007-12-14 14:00 |  | 4.55d |  |  |  | 24h |
| 28 | 1.2.4.4.1 | Eleman Arama |  | 2d | 2007-12-11 14:00 | 2007-12-13 14:00 | 26 | 4.55d | 0d |  | Oray Kan | 16h |
| 29 | 1.2.4.4.2 | Listeleme |  | 1d | 2007-12-13 14:00 | 2007-12-14 14:00 | 28 | 4.55d | 0d |  | Oray Kan | 8h |
| 30 | 1.2.4.5 | Yeni ilan |  | 1.5d | 2007-12-14 14:00 | 2007-12-17 14:00 | 29 | 4.55d | 0d |  | Oray Kan | 12h |
| 31 | 1.2.4.6 | Ödeme İşlem Listesi |  | 0.5d | 2007-12-17 14:00 | 2007-12-18 09:00 | 30 | 29.25d |  |  | Oray Kan | 4h |
| 32 | 1.2.4.7 | **İlan** |  | 1d | 2007-12-17 14:00 | 2007-12-18 14:00 |  | 4.55d |  |  |  | 8h |
| 33 | 1.2.4.7.1 | İlanlarım |  | 0.5d | 2007-12-17 14:00 | 2007-12-18 09:00 | 30 | 4.55d | 0d |  | Oray Kan | 4h |
| 34 | 1.2.4.7.2 | İlan Detay |  | 0.5d | 2007-12-18 09:00 | 2007-12-18 14:00 | 33 | 4.55d | 0d |  | Oray Kan | 4h |
| 35 | 1.2.4.8 | Başvurularım |  | 0.5d | 2007-12-18 14:00 | 2007-12-19 09:00 | 34 | 4.55d | 0d |  | Oray Kan | 4h |
| 36 | 1.2.4.9 | **Başvuru İşlemleri** |  | 2.2d | 2007-12-19 09:00 | 2007-12-21 10:36 |  | 4.55d |  |  |  | 17.6h |
| 37 | 1.2.4.9.1 | Başvuru cevaplama |  | 0.5d | 2007-12-19 09:00 | 2007-12-19 14:00 | 35 | 4.55d | 0d |  | Oray Kan | 4h |
| 38 | 1.2.4.9.2 | Mülakata çağır |  | 0.5d | 2007-12-19 14:00 | 2007-12-20 09:00 | 37 | 4.55d | 0d |  | Oray Kan | 4h |
| 39 | 1.2.4.9.3 | Klasöre Gönder |  | 0.5d | 2007-12-20 09:00 | 2007-12-20 14:00 | 38 | 4.55d | 0d |  | Oray Kan | 4h |
| 40 | 1.2.4.9.4 | Satın Al |  | 0.2d | 2007-12-20 14:00 | 2007-12-20 15:36 | 39 | 4.55d | 0d |  | Oray Kan | 1.6h |
| 41 | 1.2.4.9.5 | Başvuru istatistikleri |  | 0.5d | 2007-12-20 15:36 | 2007-12-21 10:36 | 40 | 4.55d | 0d |  | Oray Kan | 4h |
| 42 | 1.2.4.10 | Klasör Yönlendirme |  | 1d | 2007-12-21 10:36 | 2007-12-22 10:36 | 41 | 4.55d | 0d |  | Oray Kan | 8h |
| 43 | 1.2.4.11 | Projeler |  | 0.5d | 2007-12-22 10:36 | 2007-12-24 10:36 | 42 | 4.55d |  |  | Oray Kan | 4h |
| 44 | 1.3 | Yönetim Harici Kısmın Tamamlanması | milestone | 0d | 2007-12-28 16:00 | 2007-12-28 16:00 | 22, 43 | 0d |  | start no earlier than 2007-12-24 09:00 |  |  |
| 45 | 1.4 | **Yönetim paneli** |  | 14d | 2007-12-28 16:00 | 2008-01-16 11:00 | 44 | 0d |  |  |  | 218.4h |
| 46 | 1.4.1 | Kullanıcı girişi |  | 0.5d | 2007-12-28 16:00 | 2007-12-29 11:00 |  | 0.7d | 0d |  | Burak Uçakan | 4h |
| 47 | 1.4.2 | Kullanıcı tanımlama/yetkilendirme |  | 1d | 2007-12-29 11:00 | 2007-12-31 16:00 | 46 | 0.7d | 0d |  | Burak Uçakan | 8h |
| 48 | 1.4.3 | **Aday işlemleri** |  | 4d | 2007-12-31 16:00 | 2008-01-04 16:00 | 47 | 0.7d | 0d |  |  | 32h |
| 49 | 1.4.3.1 | Aday listesi |  | 0.5d | 2007-12-31 16:00 | 2008-01-01 11:00 |  | 0.7d | 0d |  | Burak Uçakan | 4h |
| 50 | 1.4.3.2 | Kişi kartı |  | 0.5d | 2008-01-01 11:00 | 2008-01-01 16:00 | 49 | 0.7d | 0d |  | Burak Uçakan | 4h |
| 51 | 1.4.3.3 | Özgeçmiş düzenleme/onaylama |  | 0.5d | 2008-01-01 16:00 | 2008-01-02 11:00 | 50 | 0.7d | 0d |  | Burak Uçakan | 4h |
| 52 | 1.4.3.4 | Klasöre gönder |  | 0.25d | 2008-01-02 11:00 | 2008-01-02 14:00 | 51 | 0.7d | 0d |  | Burak Uçakan | 2h |
| 53 | 1.4.3.5 | Özel projeye gönder |  | 0.25d | 2008-01-02 14:00 | 2008-01-02 16:00 | 52 | 0.7d | 0d |  | Burak Uçakan | 2h |
| 54 | 1.4.3.6 | Eleman/yönetici havuzuna at |  | 0.25d | 2008-01-02 16:00 | 2008-01-03 09:00 | 53 | 0.7d | 0d |  | Burak Uçakan | 2h |
| 55 | 1.4.3.7 | Mesaj gönder |  | 0.5d | 2008-01-03 09:00 | 2008-01-03 14:00 | 54 | 0.7d | 0d |  | Burak Uçakan | 4h |
| 56 | 1.4.3.8 | Mülakata çağır |  | 1d | 2008-01-03 14:00 | 2008-01-04 14:00 | 55 | 0.7d | 0d |  | Burak Uçakan | 8h |
| 57 | 1.4.3.9 | Aktif/pasif yap |  | 0.25d | 2008-01-04 14:00 | 2008-01-04 16:00 | 56 | 0.7d |  |  | Burak Uçakan | 2h |

| ID | WBS | Task | Duration | Start | Finish | Predecessors | Total slack | Free slack | Resources | Work |
| --- | --- | --- | --- | --- | --- | --- | --- | --- | --- | --- |
| 58 | 1.4.4 | **Firma yönetimi** | 2.5d | 2008-01-04 16:00 | 2008-01-08 16:00 | 48 | 0.7d | 0d |  | 20h |
| 59 | 1.4.4.1 | Firma listesi | 0.5d | 2008-01-04 16:00 | 2008-01-05 11:00 |  | 0.7d | 0d | Burak Uçakan | 4h |
| 60 | 1.4.4.2 | Firma işlemleri | 1d | 2008-01-05 11:00 | 2008-01-07 16:00 | 59 | 0.7d | 0d | Burak Uçakan | 8h |
| 61 | 1.4.4.3 | Firma girişi | 1d | 2008-01-07 16:00 | 2008-01-08 16:00 | 60 | 0.7d |  | Burak Uçakan | 8h |
| 62 | 1.4.5 | **İçerik yönetimi** | 1d | 2008-01-08 16:00 | 2008-01-09 16:00 | 58 | 0.7d | 0d |  | 8h |
| 63 | 1.4.5.1 | Makale yönetimi | 0.5d | 2008-01-08 16:00 | 2008-01-09 11:00 |  | 0.7d | 0d | Burak Uçakan | 4h |
| 64 | 1.4.5.2 | Firma görüşleri yönetimi | 0.25d | 2008-01-09 11:00 | 2008-01-09 14:00 | 63 | 0.7d | 0d | Burak Uçakan | 2h |
| 65 | 1.4.5.3 | Başarı hikayeleri yönetimi | 0.25d | 2008-01-09 14:00 | 2008-01-09 16:00 | 64 | 0.7d |  | Burak Uçakan | 2h |
| 66 | 1.4.6 | **İlan kontrolü** | 1d | 2008-01-09 16:00 | 2008-01-10 16:00 | 62 | 0.7d | 0d |  | 8h |
| 67 | 1.4.6.1 | İlan listesi | 0.5d | 2008-01-09 16:00 | 2008-01-10 11:00 |  | 0.7d | 0d | Burak Uçakan | 4h |
| 68 | 1.4.6.2 | Başvuru listesi | 0.5d | 2008-01-10 11:00 | 2008-01-10 16:00 | 67 | 0.7d |  | Burak Uçakan | 4h |
| 69 | 1.4.7 | **Tanımlama ekranları** | 3.3d | 2008-01-10 16:00 | 2008-01-15 14:24 | 66 | 0.7d |  |  | 26.4h |
| 70 | 1.4.7.1 | Sektörler | 0.15d | 2008-01-10 16:00 | 2008-01-11 08:12 |  | 0.7d | 0d | Burak Uçakan | 1.2h |
| 71 | 1.4.7.2 | Pozisyonlar | 0.15d | 2008-01-11 08:12 | 2008-01-11 09:24 | 70 | 0.7d | 0d | Burak Uçakan | 1.2h |
| 72 | 1.4.7.3 | İlan kaldırma sebepleri | 0.15d | 2008-01-11 09:24 | 2008-01-11 10:36 | 71 | 0.7d | 0d | Burak Uçakan | 1.2h |
| 73 | 1.4.7.4 | Diller | 0.15d | 2008-01-11 10:36 | 2008-01-11 11:48 | 72 | 0.7d | 0d | Burak Uçakan | 1.2h |
| 74 | 1.4.7.5 | Ülkeler | 0.15d | 2008-01-11 11:48 | 2008-01-11 14:00 | 73 | 0.7d | 0d | Burak Uçakan | 1.2h |
| 75 | 1.4.7.6 | Şehirler | 0.15d | 2008-01-11 14:00 | 2008-01-11 15:12 | 74 | 0.7d | 0d | Burak Uçakan | 1.2h |
| 76 | 1.4.7.7 | İlçeler | 0.15d | 2008-01-11 15:12 | 2008-01-11 16:24 | 75 | 0.7d | 0d | Burak Uçakan | 1.2h |
| 77 | 1.4.7.8 | İş alanları | 0.15d | 2008-01-11 16:24 | 2008-01-12 08:36 | 76 | 0.7d | 0d | Burak Uçakan | 1.2h |
| 78 | 1.4.7.9 | Aday ünvanları | 0.15d | 2008-01-12 08:36 | 2008-01-12 09:48 | 77 | 0.7d | 0d | Burak Uçakan | 1.2h |
| 79 | 1.4.7.10 | Eğitim durumu | 0.15d | 2008-01-12 09:48 | 2008-01-12 11:00 | 78 | 0.7d | 0d | Burak Uçakan | 1.2h |
| 80 | 1.4.7.11 | Nitelik tipleri | 0.15d | 2008-01-12 11:00 | 2008-01-14 08:12 | 79 | 0.7d | 0d | Burak Uçakan | 1.2h |
| 81 | 1.4.7.12 | Üniversiteler | 0.15d | 2008-01-14 08:12 | 2008-01-14 09:24 | 80 | 0.7d | 0d | Burak Uçakan | 1.2h |
| 82 | 1.4.7.13 | Üniversite fakülteleri | 0.15d | 2008-01-14 09:24 | 2008-01-14 10:36 | 81 | 0.7d | 0d | Burak Uçakan | 1.2h |
| 83 | 1.4.7.14 | Üniversite bölümleri | 0.15d | 2008-01-14 10:36 | 2008-01-14 11:48 | 82 | 0.7d | 0d | Burak Uçakan | 1.2h |
| 84 | 1.4.7.15 | Firma departmanları | 0.15d | 2008-01-14 11:48 | 2008-01-14 14:00 | 83 | 0.7d | 0d | Burak Uçakan | 1.2h |
| 85 | 1.4.7.16 | Kimlik belgesi tipleri | 0.15d | 2008-01-14 14:00 | 2008-01-14 15:12 | 84 | 0.7d | 0d | Burak Uçakan | 1.2h |
| 86 | 1.4.7.17 | Sürücü ehliyeti tipleri | 0.15d | 2008-01-14 15:12 | 2008-01-14 16:24 | 85 | 0.7d | 0d | Burak Uçakan | 1.2h |
| 87 | 1.4.7.18 | Engellilik tipleri | 0.15d | 2008-01-14 16:24 | 2008-01-15 08:36 | 86 | 0.7d | 0d | Burak Uçakan | 1.2h |
| 88 | 1.4.7.19 | Hobiler | 0.15d | 2008-01-15 08:36 | 2008-01-15 09:48 | 87 | 0.7d | 0d | Burak Uçakan | 1.2h |
| 89 | 1.4.7.20 | Bilgisayar bilgi tipleri | 0.15d | 2008-01-15 09:48 | 2008-01-15 11:00 | 88 | 0.7d | 0d | Burak Uçakan | 1.2h |
| 90 | 1.4.7.21 | Sertifikalar | 0.15d | 2008-01-15 11:00 | 2008-01-15 13:12 | 89 | 0.7d | 0d | Burak Uçakan | 1.2h |
| 91 | 1.4.7.22 | Özel eğitim tipleri | 0.15d | 2008-01-15 13:12 | 2008-01-15 14:24 | 90 | 0.7d |  | Burak Uçakan | 1.2h |

| ID | WBS | Task | Type | Duration | Start | Finish | Predecessors | Total slack | Resources | Work |
| --- | --- | --- | --- | --- | --- | --- | --- | --- | --- | --- |
| 92 | 1.4.8 | **Ödeme işlemleri** |  | 4d | 2007-12-28 16:00 | 2008-01-03 11:00 |  | 0d |  | 32h |
| 93 | 1.4.8.1 | Ödeme takibi (listesi) |  | 1d | 2007-12-28 16:00 | 2007-12-31 11:00 |  | 0d | Oray Kan | 8h |
| 94 | 1.4.8.2 | Ödeme girişi |  | 1d | 2007-12-31 11:00 | 2008-01-01 11:00 | 93 | 0d | Oray Kan | 8h |
| 95 | 1.4.8.3 | Faturalama |  | 2d | 2008-01-01 11:00 | 2008-01-03 11:00 | 94 | 0d | Oray Kan | 16h |
| 96 | 1.4.9 | Banner yönetimi |  | 2d | 2008-01-03 11:00 | 2008-01-05 11:00 | 95 | 0d | Oray Kan | 16h |
| 97 | 1.4.10 | Raporlar |  | 8d | 2008-01-05 11:00 | 2008-01-16 11:00 | 96 | 0d | Oray Kan | 64h |
| 98 | 1.5 | Test |  | 5d | 2008-01-16 11:00 | 2008-01-22 16:00 | 97, 91 | 0d | Oray Kan; Burak Uçakan | 80h |
| 99 | 1.6 | Kurulum |  | 1d | 2008-01-22 16:00 | 2008-01-23 16:00 | 98 | 0d |  |  |
| 100 | 1.7 | Proje Teslim | milestone | 0d | 2008-01-23 16:00 | 2008-01-23 16:00 | 99 | 0d |  |  |
