# pikcv

Schedule from MS Project, 2007-10-29 to 2008-01-11, A marks actual dates.

## Calendars

- Standard: Mon-Fri 08:00-12:00, 13:00-17:00; Sat-Sun off.

## Resources

| Resource |
| --- |
| YU 1 |
| YU 2 |

## Schedule

| ID | WBS | Task | Duration | Start | Finish | Predecessors | Complete | Remaining | Baseline start | Baseline finish | Baseline duration | Total slack | Free slack | Resources | Work | Actual work |
| --- | --- | --- | --- | --- | --- | --- | --- | --- | --- | --- | --- | --- | --- | --- | --- | --- |
| 1 | 1 | **PIK** | 54d | 2007-10-29 09:00 A | 2008-01-11 09:00 |  | 9% | 49.39d | 2007-10-29 09:00 | 2008-01-11 09:00 | 54d | 0d |  |  | 812h | 72.8h |
| 2 | 1.1 | Veritabanı tasarımı | 5d | 2007-10-29 09:00 A | 2007-11-03 09:00 A |  | 100% |  | 2007-10-29 09:00 | 2007-11-03 09:00 | 5d |  |  | YU 2 | 40h | 40h |
| 3 | 1.2 | **PIKCV site** | 36.62d | 2007-11-03 09:00 A | 2007-12-25 14:00 | 2 | 10% | 32.92d | 2007-11-03 09:00 | 2007-12-25 14:00 | 36.62d | 0d |  |  | 324h | 32.8h |
| 4 | 1.2.1 | Anasayfa | 1d | 2007-11-03 09:00 | 2007-11-05 14:00 |  |  |  | 2007-11-03 09:00 | 2007-11-05 14:00 | 1d | 2.48d | 0d | YU 1 | 8h |  |
| 5 | 1.2.2 | Statik sayfalar | 1d | 2007-11-05 14:00 | 2007-11-06 14:00 | 4 |  |  | 2007-11-05 14:00 | 2007-11-06 14:00 | 1d | 2.86d | 0d | YU 1 | 8h |  |
| 6 | 1.2.3 | **İş arayan** | 17.5d | 2007-11-06 14:00 A | 2007-11-30 09:00 | 5 | 22% | 13.72d | 2007-11-06 14:00 | 2007-11-30 09:00 | 17.5d | 0d |  |  | 152h | 32.8h |
| 7 | 1.2.3.1 | Anasayfa | 2d | 2007-11-06 14:00 A | 2007-11-08 14:00 A |  | 100% |  | 2007-11-06 14:00 | 2007-11-08 14:00 | 2d |  |  | YU 1 | 16h | 16h |
| 8 | 1.2.3.2 | **Yeni üyelik** | 6d | 2007-11-08 14:00 A | 2007-11-16 14:00 | 7 | 32% | 4.06d | 2007-11-08 14:00 | 2007-11-16 14:00 | 6d | 0d |  |  | 52h | 16.8h |
| 9 | 1.2.3.2.1 | Kişisel bilgi girişi | 0.5d | 2007-11-08 14:00 A | 2007-11-09 09:00 A |  | 100% |  | 2007-11-08 14:00 | 2007-11-09 09:00 | 0.5d |  |  | YU 1 | 4h | 4h |
| 10 | 1.2.3.2.2 | CV girişi | 3d | 2007-11-09 09:00 A | 2007-11-13 14:00 | 9 | 20% | 2.4d | 2007-11-09 09:00 | 2007-11-13 14:00 | 3d | 3d |  | YU 1 | 24h | 4.8h |
| 11 | 1.2.3.2.3 | Pozisyon girişi | 1d | 2007-11-13 14:00 A | 2007-11-14 14:00 A | 10 | 100% |  | 2007-11-13 14:00 | 2007-11-14 14:00 | 1d |  |  | YU 1 | 8h | 8h |
| 12 | 1.2.3.2.4 | Testler | 2d | 2007-11-14 14:00 | 2007-11-16 14:00 | 11 |  |  | 2007-11-14 14:00 | 2007-11-16 14:00 | 2d | 0d |  | YU 1 | 16h |  |
| 13 | 1.2.3.3 | Kişisel anasayfa | 2d | 2007-11-16 14:00 | 2007-11-20 09:00 | 8 |  |  | 2007-11-16 14:00 | 2007-11-20 09:00 | 2d | 0d |  | YU 1 | 16h |  |
| 14 | 1.2.3.4 | Üye girişi | 0.5d | 2007-11-20 09:00 | 2007-11-20 14:00 | 13 |  |  | 2007-11-20 09:00 | 2007-11-20 14:00 | 0.5d | 0d |  | YU 1 | 4h |  |
| 15 | 1.2.3.5 | İş arama | 2d | 2007-11-20 14:00 | 2007-11-22 14:00 | 14 |  |  | 2007-11-20 14:00 | 2007-11-22 14:00 | 2d | 0d |  | YU 1 | 16h |  |
| 16 | 1.2.3.6 | **İlanlar** | 2.5d | 2007-11-22 14:00 | 2007-11-27 09:00 | 15 |  |  | 2007-11-22 14:00 | 2007-11-27 09:00 | 2.5d | 0d |  |  | 24h |  |
| 17 | 1.2.3.6.1 | İlan listesi | 2d | 2007-11-22 14:00 | 2007-11-26 09:00 |  |  |  | 2007-11-22 14:00 | 2007-11-26 09:00 | 2d | 0d |  | YU 1 | 16h |  |
| 18 | 1.2.3.6.2 | İlan başvuru | 1d | 2007-11-26 09:00 | 2007-11-27 09:00 | 17 |  |  | 2007-11-26 09:00 | 2007-11-27 09:00 | 1d | 0d |  | YU 1 | 8h |  |
| 19 | 1.2.3.7 | Başvurularım | 1d | 2007-11-27 09:00 | 2007-11-28 09:00 | 16 |  |  | 2007-11-27 09:00 | 2007-11-28 09:00 | 1d | 0d |  | YU 1 | 8h |  |
| 20 | 1.2.3.8 | Makaleler | 1d | 2007-11-28 09:00 | 2007-11-29 09:00 | 19 |  |  | 2007-11-28 09:00 | 2007-11-29 09:00 | 1d | 0d |  | YU 1 | 8h |  |
| 21 | 1.2.3.9 | Firma görüşleri | 0.5d | 2007-11-29 09:00 | 2007-11-29 14:00 | 20 |  |  | 2007-11-29 09:00 | 2007-11-29 14:00 | 0.5d | 0d |  | YU 1 | 4h |  |
| 22 | 1.2.3.10 | Başarı hikayeleri | 0.5d | 2007-11-29 14:00 | 2007-11-30 09:00 | 21 |  |  | 2007-11-29 14:00 | 2007-11-30 09:00 | 0.5d | 0d |  | YU 1 | 4h |  |
| 23 | 1.2.4 | **İşveren** | 17d | 2007-11-30 09:00 | 2007-12-25 09:00 | 6 |  |  | 2007-11-30 09:00 | 2007-12-25 09:00 | 17d | 0d |  |  | 152h |  |
| 24 | 1.2.4.1 | Anasayfa | 1d | 2007-11-30 09:00 | 2007-12-01 09:00 |  |  |  | 2007-11-30 09:00 | 2007-12-01 09:00 | 1d | 0d |  | YU 1 | 8h |  |
| 25 | 1.2.4.2 | Yeni üyelik | 1d | 2007-12-01 09:00 | 2007-12-03 14:00 | 24 |  |  | 2007-12-01 09:00 | 2007-12-03 14:00 | 1d | 0d |  | YU 1 | 8h |  |
| 26 | 1.2.4.3 | Üye girişi | 0.5d | 2007-12-03 14:00 | 2007-12-04 09:00 | 25 |  |  | 2007-12-03 14:00 | 2007-12-04 09:00 | 0.5d | 0d |  | YU 1 | 4h |  |
| 27 | 1.2.4.4 | Firma anasayfası | 2d | 2007-12-04 09:00 | 2007-12-06 09:00 | 26 |  |  | 2007-12-04 09:00 | 2007-12-06 09:00 | 2d | 0d |  | YU 1 | 16h |  |

| ID | WBS | Task | Duration | Start | Finish | Predecessors | Baseline start | Baseline finish | Baseline duration | Total slack | Free slack | Resources | Work |
| --- | --- | --- | --- | --- | --- | --- | --- | --- | --- | --- | --- | --- | --- |
| 28 | 1.2.4.5 | **İlanlarım** | 5.5d | 2007-12-06 09:00 | 2007-12-13 14:00 | 27 | 2007-12-06 09:00 | 2007-12-13 14:00 | 5.5d | 0d |  |  | 48h |
| 29 | 1.2.4.5.1 | İlan listesi | 2d | 2007-12-06 09:00 | 2007-12-08 09:00 |  | 2007-12-06 09:00 | 2007-12-08 09:00 | 2d | 0d |  | YU 1 | 16h |
| 30 | 1.2.4.5.2 | Başvurular | 1d | 2007-12-08 09:00 | 2007-12-10 14:00 | 29 | 2007-12-08 09:00 | 2007-12-10 14:00 | 1d | 0d |  | YU 1 | 8h |
| 31 | 1.2.4.5.3 | Başvuru cevaplama | 0.5d | 2007-12-10 14:00 | 2007-12-11 09:00 | 30 | 2007-12-10 14:00 | 2007-12-11 09:00 | 0.5d | 0d |  | YU 1 | 4h |
| 32 | 1.2.4.5.4 | Mülakat atama | 2d | 2007-12-11 09:00 | 2007-12-13 09:00 | 31 | 2007-12-11 09:00 | 2007-12-13 09:00 | 2d | 0d |  | YU 1 | 16h |
| 33 | 1.2.4.5.5 | Başvuru istatistikleri | 0.5d | 2007-12-13 09:00 | 2007-12-13 14:00 | 32 | 2007-12-13 09:00 | 2007-12-13 14:00 | 0.5d | 0d |  | YU 1 | 4h |
| 34 | 1.2.4.6 | Yeni ilan | 2.5d | 2007-12-13 14:00 | 2007-12-17 14:00 | 28 | 2007-12-13 14:00 | 2007-12-17 14:00 | 2.5d | 0d |  | YU 1 | 20h |
| 35 | 1.2.4.7 | CV tarama | 3d | 2007-12-17 14:00 | 2007-12-20 14:00 | 34 | 2007-12-17 14:00 | 2007-12-20 14:00 | 3d | 0d |  | YU 1 | 24h |
| 36 | 1.2.4.8 | Özel proje | 1d | 2007-12-20 14:00 | 2007-12-21 14:00 | 35 | 2007-12-20 14:00 | 2007-12-21 14:00 | 1d | 0d |  | YU 1 | 8h |
| 37 | 1.2.4.9 | Klasör yönetimi | 2d | 2007-12-21 14:00 | 2007-12-25 09:00 | 36 | 2007-12-21 14:00 | 2007-12-25 09:00 | 2d | 0d |  | YU 1 | 16h |
| 38 | 1.2.5 | Site haritası | 0.5d | 2007-12-25 09:00 | 2007-12-25 14:00 | 23 | 2007-12-25 09:00 | 2007-12-25 14:00 | 0.5d | 0d |  | YU 1 | 4h |
| 39 | 1.3 | **Yönetim paneli** | 30.62d | 2007-11-03 09:00 | 2007-12-17 14:00 | 2 | 2007-11-03 09:00 | 2007-12-17 14:00 | 30.62d | 5.12d | 0d |  | 272h |
| 40 | 1.3.1 | Kullanıcı girişi | 0.5d | 2007-11-03 09:00 | 2007-11-05 09:00 |  | 2007-11-03 09:00 | 2007-11-05 09:00 | 0.5d | 5.12d | 0d | YU 2 | 4h |
| 41 | 1.3.2 | Kullanıcı tanımlama/yetkilendirme | 1.5d | 2007-11-05 09:00 | 2007-11-06 14:00 | 40 | 2007-11-05 09:00 | 2007-11-06 14:00 | 1.5d | 5.5d | 0d | YU 2 | 12h |
| 42 | 1.3.3 | **Aday işlemleri** | 7d | 2007-11-06 14:00 | 2007-11-15 14:00 | 41 | 2007-11-06 14:00 | 2007-11-15 14:00 | 7d | 5.5d | 0d |  | 60h |
| 43 | 1.3.3.1 | Aday listesi | 1d | 2007-11-06 14:00 | 2007-11-07 14:00 |  | 2007-11-06 14:00 | 2007-11-07 14:00 | 1d | 5.5d | 0d | YU 2 | 8h |
| 44 | 1.3.3.2 | Kişi kartı | 2d | 2007-11-07 14:00 | 2007-11-09 14:00 | 43 | 2007-11-07 14:00 | 2007-11-09 14:00 | 2d | 5.38d | 0d | YU 2 | 16h |
| 45 | 1.3.3.3 | Özgeçmiş düzenleme/onaylama | 1d | 2007-11-09 14:00 | 2007-11-12 09:00 | 44 | 2007-11-09 14:00 | 2007-11-12 09:00 | 1d | 5.38d | 0d | YU 2 | 8h |
| 46 | 1.3.3.4 | Klasöre gönder | 0.5d | 2007-11-12 09:00 | 2007-11-12 14:00 | 45 | 2007-11-12 09:00 | 2007-11-12 14:00 | 0.5d | 5.5d | 0d | YU 2 | 4h |
| 47 | 1.3.3.5 | Özel projeye gönder | 0.5d | 2007-11-12 14:00 | 2007-11-13 09:00 | 46 | 2007-11-12 14:00 | 2007-11-13 09:00 | 0.5d | 5.5d | 0d | YU 2 | 4h |
| 48 | 1.3.3.6 | Eleman/yönetici havuzuna at | 0.5d | 2007-11-13 09:00 | 2007-11-13 14:00 | 47 | 2007-11-13 09:00 | 2007-11-13 14:00 | 0.5d | 5.5d | 0d | YU 2 | 4h |
| 49 | 1.3.3.7 | Mesaj gönder | 0.5d | 2007-11-13 14:00 | 2007-11-14 09:00 | 48 | 2007-11-13 14:00 | 2007-11-14 09:00 | 0.5d | 5.5d | 0d | YU 2 | 4h |
| 50 | 1.3.3.8 | Mülakata çağır | 1d | 2007-11-14 09:00 | 2007-11-15 09:00 | 49 | 2007-11-14 09:00 | 2007-11-15 09:00 | 1d | 5.5d | 0d | YU 2 | 8h |
| 51 | 1.3.3.9 | Aktif/pasif yap | 0.5d | 2007-11-15 09:00 | 2007-11-15 14:00 | 50 | 2007-11-15 09:00 | 2007-11-15 14:00 | 0.5d | 5.5d |  | YU 2 | 4h |

| ID | WBS | Task | Duration | Start | Finish | Predecessors | Baseline start | Baseline finish | Baseline duration | Total slack | Free slack | Resources | Work |
| --- | --- | --- | --- | --- | --- | --- | --- | --- | --- | --- | --- | --- | --- |
| 52 | 1.3.4 | **Firma yönetimi** | 3.5d | 2007-11-15 14:00 | 2007-11-21 09:00 | 42 | 2007-11-15 14:00 | 2007-11-21 09:00 | 3.5d | 5.5d | 0d |  | 32h |
| 53 | 1.3.4.1 | Firma listesi | 1d | 2007-11-15 14:00 | 2007-11-16 14:00 |  | 2007-11-15 14:00 | 2007-11-16 14:00 | 1d | 5.38d | 0d | YU 2 | 8h |
| 54 | 1.3.4.2 | Firma işlemleri | 2d | 2007-11-16 14:00 | 2007-11-20 09:00 | 53 | 2007-11-16 14:00 | 2007-11-20 09:00 | 2d | 5.38d | 0d | YU 2 | 16h |
| 55 | 1.3.4.3 | Firma girişi | 1d | 2007-11-20 09:00 | 2007-11-21 09:00 | 54 | 2007-11-20 09:00 | 2007-11-21 09:00 | 1d | 5.5d |  | YU 2 | 8h |
| 56 | 1.3.5 | **İçerik yönetimi** | 1.5d | 2007-11-21 09:00 | 2007-11-22 14:00 | 52 | 2007-11-21 09:00 | 2007-11-22 14:00 | 1.5d | 5.5d | 0d |  | 12h |
| 57 | 1.3.5.1 | Makale yönetimi | 0.5d | 2007-11-21 09:00 | 2007-11-21 14:00 |  | 2007-11-21 09:00 | 2007-11-21 14:00 | 0.5d | 5.5d | 0d | YU 2 | 4h |
| 58 | 1.3.5.2 | Firma görüşleri yönetimi | 0.5d | 2007-11-21 14:00 | 2007-11-22 09:00 | 57 | 2007-11-21 14:00 | 2007-11-22 09:00 | 0.5d | 5.5d | 0d | YU 2 | 4h |
| 59 | 1.3.5.3 | Başarı hikayeleri yönetimi | 0.5d | 2007-11-22 09:00 | 2007-11-22 14:00 | 58 | 2007-11-22 09:00 | 2007-11-22 14:00 | 0.5d | 5.5d |  | YU 2 | 4h |
| 60 | 1.3.6 | **İlan kontrolü** | 2.5d | 2007-11-22 14:00 | 2007-11-27 09:00 | 56 | 2007-11-22 14:00 | 2007-11-27 09:00 | 2.5d | 5.5d | 0d |  | 24h |
| 61 | 1.3.6.1 | İlan listesi | 2d | 2007-11-22 14:00 | 2007-11-26 09:00 |  | 2007-11-22 14:00 | 2007-11-26 09:00 | 2d | 5.5d | 0d | YU 2 | 16h |
| 62 | 1.3.6.2 | Başvuru listesi | 1d | 2007-11-26 09:00 | 2007-11-27 09:00 | 61 | 2007-11-26 09:00 | 2007-11-27 09:00 | 1d | 5.5d |  | YU 2 | 8h |
| 63 | 1.3.7 | **Tanımlama ekranları** | 6.5d | 2007-11-27 09:00 | 2007-12-05 14:00 | 60 | 2007-11-27 09:00 | 2007-12-05 14:00 | 6.5d | 5.5d | 0d |  | 56h |
| 64 | 1.3.7.1 | Sektörler | 1d | 2007-11-27 09:00 | 2007-11-28 09:00 |  | 2007-11-27 09:00 | 2007-11-28 09:00 | 1d | 5.5d | 0d | YU 2 | 8h |
| 65 | 1.3.7.2 | Pozisyonlar | 1d | 2007-11-28 09:00 | 2007-11-29 09:00 | 64 | 2007-11-28 09:00 | 2007-11-29 09:00 | 1d | 5.5d | 0d | YU 2 | 8h |
| 66 | 1.3.7.3 | İlan kaldırma sebepleri | 0.25d | 2007-11-29 09:00 | 2007-11-29 11:00 | 65 | 2007-11-29 09:00 | 2007-11-29 11:00 | 0.25d | 5.5d | 0d | YU 2 | 2h |
| 67 | 1.3.7.4 | Diller | 0.25d | 2007-11-29 11:00 | 2007-11-29 14:00 | 66 | 2007-11-29 11:00 | 2007-11-29 14:00 | 0.25d | 5.5d | 0d | YU 2 | 2h |
| 68 | 1.3.7.5 | Ülkeler | 0.25d | 2007-11-29 14:00 | 2007-11-29 16:00 | 67 | 2007-11-29 14:00 | 2007-11-29 16:00 | 0.25d | 5.5d | 0d | YU 2 | 2h |
| 69 | 1.3.7.6 | Şehirler | 0.25d | 2007-11-29 16:00 | 2007-11-30 09:00 | 68 | 2007-11-29 16:00 | 2007-11-30 09:00 | 0.25d | 5.5d | 0d | YU 2 | 2h |
| 70 | 1.3.7.7 | İlçeler | 0.25d | 2007-11-30 09:00 | 2007-11-30 11:00 | 69 | 2007-11-30 09:00 | 2007-11-30 11:00 | 0.25d | 5.5d | 0d | YU 2 | 2h |
| 71 | 1.3.7.8 | İş alanları | 0.25d | 2007-11-30 11:00 | 2007-11-30 14:00 | 70 | 2007-11-30 11:00 | 2007-11-30 14:00 | 0.25d | 5.38d | 0d | YU 2 | 2h |
| 72 | 1.3.7.9 | Aday ünvanları | 0.25d | 2007-11-30 14:00 | 2007-11-30 16:00 | 71 | 2007-11-30 14:00 | 2007-11-30 16:00 | 0.25d | 5.12d | 0d | YU 2 | 2h |
| 73 | 1.3.7.10 | Eğitim durumu | 0.25d | 2007-11-30 16:00 | 2007-12-01 09:00 | 72 | 2007-11-30 16:00 | 2007-12-01 09:00 | 0.25d | 5.12d | 0d | YU 2 | 2h |
| 74 | 1.3.7.11 | Nitelik tipleri | 0.25d | 2007-12-01 09:00 | 2007-12-01 11:00 | 73 | 2007-12-01 09:00 | 2007-12-01 11:00 | 0.25d | 5.12d | 0d | YU 2 | 2h |
| 75 | 1.3.7.12 | Üniversiteler | 0.25d | 2007-12-01 11:00 | 2007-12-03 09:00 | 74 | 2007-12-01 11:00 | 2007-12-03 09:00 | 0.25d | 5.38d | 0d | YU 2 | 2h |
| 76 | 1.3.7.13 | Üniversite fakülteleri | 0.25d | 2007-12-03 09:00 | 2007-12-03 11:00 | 75 | 2007-12-03 09:00 | 2007-12-03 11:00 | 0.25d | 5.5d | 0d | YU 2 | 2h |
| 77 | 1.3.7.14 | Üniversite bölümleri | 0.25d | 2007-12-03 11:00 | 2007-12-03 14:00 | 76 | 2007-12-03 11:00 | 2007-12-03 14:00 | 0.25d | 5.5d | 0d | YU 2 | 2h |
| 78 | 1.3.7.15 | Firma departmanları | 0.25d | 2007-12-03 14:00 | 2007-12-03 16:00 | 77 | 2007-12-03 14:00 | 2007-12-03 16:00 | 0.25d | 5.5d | 0d | YU 2 | 2h |
| 79 | 1.3.7.16 | Kimlik belgesi tipleri | 0.25d | 2007-12-03 16:00 | 2007-12-04 09:00 | 78 | 2007-12-03 16:00 | 2007-12-04 09:00 | 0.25d | 5.5d | 0d | YU 2 | 2h |
| 80 | 1.3.7.17 | Sürücü ehliyeti tipleri | 0.25d | 2007-12-04 09:00 | 2007-12-04 11:00 | 79 | 2007-12-04 09:00 | 2007-12-04 11:00 | 0.25d | 5.5d | 0d | YU 2 | 2h |
| 81 | 1.3.7.18 | Engellilik tipleri | 0.25d | 2007-12-04 11:00 | 2007-12-04 14:00 | 80 | 2007-12-04 11:00 | 2007-12-04 14:00 | 0.25d | 5.5d | 0d | YU 2 | 2h |
| 82 | 1.3.7.19 | Hobiler | 0.25d | 2007-12-04 14:00 | 2007-12-04 16:00 | 81 | 2007-12-04 14:00 | 2007-12-04 16:00 | 0.25d | 5.5d | 0d | YU 2 | 2h |
| 83 | 1.3.7.20 | Bilgisayar bilgi tipleri | 0.25d | 2007-12-04 16:00 | 2007-12-05 09:00 | 82 | 2007-12-04 16:00 | 2007-12-05 09:00 | 0.25d | 5.5d | 0d | YU 2 | 2h |
| 84 | 1.3.7.21 | Sertifikalar | 0.25d | 2007-12-05 09:00 | 2007-12-05 11:00 | 83 | 2007-12-05 09:00 | 2007-12-05 11:00 | 0.25d | 5.5d | 0d | YU 2 | 2h |
| 85 | 1.3.7.22 | Özel eğitim tipleri | 0.25d | 2007-12-05 11:00 | 2007-12-05 14:00 | 84 | 2007-12-05 11:00 | 2007-12-05 14:00 | 0.25d | 5.5d |  | YU 2 | 2h |

| ID | WBS | Task | Duration | Start | Finish | Predecessors | Baseline start | Baseline finish | Baseline duration | Total slack | Free slack | Resources | Work |
| --- | --- | --- | --- | --- | --- | --- | --- | --- | --- | --- | --- | --- | --- |
| 86 | 1.3.8 | **Ödeme işlemleri** | 4.5d | 2007-12-05 14:00 | 2007-12-12 09:00 | 63 | 2007-12-05 14:00 | 2007-12-12 09:00 | 4.5d | 5.5d | 0d |  | 40h |
| 87 | 1.3.8.1 | Ödeme takibi (listesi) | 2d | 2007-12-05 14:00 | 2007-12-07 14:00 |  | 2007-12-05 14:00 | 2007-12-07 14:00 | 2d | 5.38d | 0d | YU 2 | 16h |
| 88 | 1.3.8.2 | Ödeme girişi | 1d | 2007-12-07 14:00 | 2007-12-10 09:00 | 87 | 2007-12-07 14:00 | 2007-12-10 09:00 | 1d | 5.38d | 0d | YU 2 | 8h |
| 89 | 1.3.8.3 | Faturalama | 2d | 2007-12-10 09:00 | 2007-12-12 09:00 | 88 | 2007-12-10 09:00 | 2007-12-12 09:00 | 2d | 5.5d |  | YU 2 | 16h |
| 90 | 1.3.9 | Banner yönetimi | 4d | 2007-12-12 09:00 | 2007-12-17 14:00 | 86 | 2007-12-12 09:00 | 2007-12-17 14:00 | 4d | 5.5d |  | YU 2 | 32h |
| 91 | 1.4 | Raporlar | 8d | 2007-12-25 14:00 | 2008-01-04 09:00 | 3 | 2007-12-25 14:00 | 2008-01-04 09:00 | 8d | 0d |  | YU 1 | 64h |
| 92 | 1.5 | Raporlar | 14d | 2007-12-17 14:00 | 2008-01-03 14:00 | 39 | 2007-12-17 14:00 | 2008-01-03 14:00 | 14d | 5.5d |  | YU 2 | 112h |
| 93 | 1.6 | Test | 5d | 2008-01-04 09:00 | 2008-01-11 09:00 | 91 | 2008-01-04 09:00 | 2008-01-11 09:00 | 5d | 0d |  |  |  |
